# HMI开发

Schedule from a web Gantt chart, 2025-01-08 to 2025-02-28.
Saturdays and Sundays are off

## Schedule

| ID | WBS | Task | Duration | Start | Finish | Complete |
| --- | --- | --- | --- | --- | --- | --- |
| 2 | 1 | 页面开发-模板库 | 15d | 2025-01-13 | 2025-01-31 | 50% |
| 3 | 2 | 模板开发-模板存储 | 10d | 2025-01-20 | 2025-01-31 | 50% |
| 4 | 3 | 模板开发-标准模板制作 | 25d | 2025-01-27 | 2025-02-28 | 5% |
| 5 | 4 | 组件开发-3D模型 | 10d | 2025-01-20 | 2025-01-31 | 80% |
| 6 | 5 | 组件开发-行为树 | 20d | 2025-01-20 | 2025-02-14 | 5% |
| 7 | 6 | 行为树-DSL转换 | 9d | 2025-01-20 | 2025-01-30 |  |
| 8 | 7 | 组件开发-关节控制 | 15d | 2025-01-27 | 2025-02-14 |  |
| 9 | 8 | 组件开发-末端控制 | 13d | 2025-01-29 | 2025-02-14 |  |
| 10 | 9 | 组件开发-默认标准组件 | 5d | 2025-02-03 | 2025-02-07 | 80% |
| 11 | 10 | 页面开发-低代码编辑器 | 16d | 2025-01-09 | 2025-01-30 | 60% |
| 12 | 11 | 通信开发-数据绑定 & 事件通知 | 15d | 2025-02-03 | 2025-02-21 |  |
| 13 | 12 | HMI构建 | 15d | 2025-01-13 | 2025-01-31 | 90% |
| 14 | 13 | HMI部署 | 16d | 2025-01-20 | 2025-02-10 | 50% |
| 15 | 14 | 后端开发-ws服务端 | 14d | 2025-02-03 | 2025-02-20 | 50% |
| 16 | 15 | 后端开发-通信协议转换 | 9d | 2025-02-03 | 2025-02-13 | 50% |
| 17 | 16 | cef调研 | 8d | 2025-01-08 | 2025-01-17 | 100% |
| 18 | 17 | QT webEngine 调研 | 8d | 2025-01-08 | 2025-01-17 | 100% |
| 19 | 18 | 后端开发- 项目文件数据库存储 | 9d | 2025-01-20 | 2025-01-30 | 75% |
| 20 | 19 | 后端开发- 工程模板数据库存储 | 9d | 2025-01-20 | 2025-01-30 | 75% |
| 21 | 20 | 前端开发- 兼容es5工具链 | 9d | 2025-01-08 | 2025-01-20 | 100% |
| 22 | 21 | 前端开发- HMI工程文件打包解包 | 7d | 2025-01-10 | 2025-01-20 | 100% |

Notes:
- 3: 数据库
- 4: 如堵板、壁面清洗、萃取分液等标准模版。
- 6: 将越擎对节点的定义无损转换成我们的节点定义（依赖于越擎的行为树进度）
- 7: （依赖于越擎的行为树进度）
- 10: 包括按钮、输入框、文本框、工程容器等标准组件。
- 12: 各个组件的数据通信。
- 15: 加入对末端夹爪控制的支持（依赖于陈博士的python驱动更新）
- 19: 查询 创建 删除已完成 还需要更新接口
- 20: 查询 创建 删除已完成 还需要更新接口
